# caArray

Schedule from MS Project, 2007-04-02 to 2007-12-28, A marks actual dates.
Project Schedule
5AM Solutions

## Calendars

- Standard: Mon-Fri 08:00-12:00, 13:00-17:00; Sat-Sun off.

## Resources

| Resource |
| --- |
| etavela |
| smatyas |
| bgendleman |
| rdaly |
| jpike |
| rsrinavasa |
| smiller |
| pduvall |
| aglover |
| bmason |
| tparnell |

## Schedule

| ID | WBS | Task | Duration | Start | Finish | Predecessors | Complete | Remaining | Baseline start | Baseline finish | Baseline duration | Total slack | Free slack | Constraint | Deadline | Resources | Work | Actual work |
| --- | --- | --- | --- | --- | --- | --- | --- | --- | --- | --- | --- | --- | --- | --- | --- | --- | --- | --- |
| 1 | 1 | **caArray 2.0** | 194.3d? | 2007-04-02 A | 2007-12-28 |  | 27% | 142.66d? | 2007-04-02 | 2007-05-21 | 35.75d? | -109.3d | 0d |  | 2007-07-27 |  | 4089.47h | 2672.95h |
| 2 | 1.1 | **Inception Phase** | 33.3d | 2007-04-02 A | 2007-05-17 A |  | 100% |  | 2007-04-02 | 2007-05-15 | 32d |  |  |  |  |  | 749.28h | 749.28h |
| 3 | 1.1.1 | **Inception Iteration 1** | 33.3d | 2007-04-02 A | 2007-05-17 A |  | 100% |  | 2007-04-02 | 2007-05-15 | 32d |  |  |  |  |  | 749.28h | 749.28h |
| 4 | 1 | **Project Management** | 31.25d | 2007-04-02 A | 2007-05-15 A |  | 100% |  | 2007-04-02 | 2007-05-15 | 31.25d |  |  |  |  |  | 20h | 20h |
| 5 | 1.1.1.1.1 | Plan the project | 12d | 2007-04-02 A | 2007-04-19 A |  | 100% |  | 2007-04-02 | 2007-04-19 | 12d |  |  | start no earlier than 2007-04-02 |  | rdaly [5%]; bgendleman | 20h | 20h |
| 6 | 1.4 | Plan Remainder of Initial Iteration | 1d | 2007-04-19 A | 2007-04-19 A |  | 100% |  | 2007-04-19 | 2007-04-19 | 1d |  |  | start no earlier than 2007-04-19 |  |  |  |  |
| 7 | 1.8 | Plan for Next Iteration | 5d | 2007-05-07 A | 2007-05-11 A |  | 100% |  | 2007-05-07 | 2007-05-11 | 5d |  |  |  |  |  |  |  |
| 8 | 1.1.1.1.4 | **Finalize Deliverables** | 31.25d | 2007-04-02 A | 2007-05-15 A |  | 100% |  | 2007-04-02 | 2007-05-15 | 31.25d |  |  |  |  |  |  |  |
| 9 | 1.1.1.1.4.1 | March Status Report | 2h | 2007-04-16 A | 2007-04-16 A |  | 100% |  | 2007-04-16 | 2007-04-16 | 2h |  |  | start no earlier than 2007-04-16 | 2007-04-18 |  |  |  |
| 10 | 1.1.1.1.4.2 | April Status Report | 2h | 2007-05-15 A | 2007-05-15 A |  | 100% |  | 2007-05-15 | 2007-05-15 | 2h |  |  | start no earlier than 2007-05-15 | 2007-05-15 |  |  |  |
| 11 | 1.1.1.1.4.3 | Release Risk List | 2h | 2007-04-02 A | 2007-04-02 A |  | 100% |  | 2007-04-02 | 2007-04-02 | 2h |  |  |  | 2007-05-15 |  |  |  |
| 12 | 3 | **Requirements** | 30.5d | 2007-04-02 A | 2007-05-14 A |  | 100% |  | 2007-04-02 | 2007-05-14 | 30.35d |  |  |  |  |  | 160.6h | 160.6h |
| 13 | 3.1 | Define the Preliminary Vision | 5d | 2007-04-23 A | 2007-05-04 A | 5SS, 14FF | 100% |  | 2007-04-23 | 2007-05-04 | 5d |  |  | start no earlier than 1999-05-04 |  |  |  |  |
| 14 | 3.2 | **Elicit Stakeholder Needs** | 22.4d | 2007-04-04 A | 2007-05-04 A | 5SS | 100% |  | 2007-04-04 | 2007-05-04 | 22.75d |  |  |  |  |  | 45h | 45h |
| 15 | 1.1.1.2.2.1 | Live Meeting with NCICB Stakeholders | 4.38d | 2007-04-04 A | 2007-04-12 A |  | 100% |  | 2007-04-04 | 2007-04-11 | 4.38d |  |  | start no earlier than 2007-04-04 |  | bgendleman; rdaly; etavela [25%] | 30h | 30h |
| 16 | 1.1.1.2.2.2 | Teleconference with Columbia - Aris | 1h | 2007-04-09 A | 2007-04-09 A | 15 | 100% |  | 2007-04-09 | 2007-04-09 | 1h |  |  |  |  | bgendleman | 1h | 1h |
| 17 | 1.1.1.2.2.3 | Teleconference with Northwestern | 2h | 2007-04-20 A | 2007-04-20 A |  | 100% |  | 2007-04-20 | 2007-04-20 | 2h |  |  | start no earlier than 2007-04-20 |  | bgendleman | 2h | 2h |
| 18 | 1.1.1.2.2.4 | Live Meeting with Georgetown | 4h | 2007-04-23 A | 2007-04-23 A | 17 | 100% |  | 2007-04-27 | 2007-04-27 | 4h |  |  | start no earlier than 2007-04-23 |  | bgendleman | 4h | 4h |
| 19 | 1.1.1.2.2.5 | Live Meeting with Thomas Jefferson | 4h | 2007-04-27 A | 2007-04-27 A | 18 | 100% |  | 2007-04-27 | 2007-05-04 | 4h |  |  | start no earlier than 2007-04-26 |  | bgendleman | 4h | 4h |
| 20 | 1.1.1.2.2.6 | Live Meeting with U Pitt | 4h | 2007-05-03 A | 2007-05-04 A | 19 | 100% |  | 2007-05-04 | 2007-05-04 | 4h |  |  | start no earlier than 2007-04-30 |  | bgendleman | 4h | 4h |
| 21 | 3.3 | Identify and Describe Use Cases | 4d | 2007-04-18 A | 2007-04-23 A |  | 100% |  | 2007-04-18 | 2007-04-23 | 4d |  |  | finish no earlier than 2007-04-20 |  | bgendleman; rdaly | 56h | 56h |
| 22 | 3.5 | Refine the System Definition | 6.35d | 2007-04-24 A | 2007-05-04 A | 6, 21 | 100% |  | 2007-04-24 | 2007-05-10 | 6.25d |  |  | start no earlier than 2007-04-18 |  | bgendleman; etavela [10%] | 20h | 20h |
| 23 | 1.1.1.2.5 | **Implement Requirement and Test Traceability** | 3.25d | 2007-04-16 A | 2007-04-19 A |  | 100% |  | 2007-04-16 | 2007-04-20 | 4.6d |  |  |  |  |  | 3.6h | 3.6h |
| 24 | 1.1.1.2.5.1 | Determine Approach | 2.25d | 2007-04-16 A | 2007-04-19 A |  | 100% |  | 2007-04-16 | 2007-04-20 | 2.25d |  |  | start no earlier than 2007-04-16 |  | bgendleman [20%]; etavela [20%] | 3.6h | 3.6h |
| 25 | 3.6 | Manage Changing Requirements | 1d | 2007-04-27 A | 2007-05-04 A | 13SS | 100% |  | 2007-04-27 | 2007-05-04 | 1d |  |  | start no earlier than 2007-04-25 |  | bgendleman | 8h | 8h |

Notes:
- 15: expect follow up with Suba, Mervi and Xiaopeng as requirements contributors

| ID | WBS | Task | Type | Duration | Start | Finish | Predecessors | Complete | Baseline start | Baseline finish | Baseline duration | Constraint | Deadline | Resources | Work | Actual work |
| --- | --- | --- | --- | --- | --- | --- | --- | --- | --- | --- | --- | --- | --- | --- | --- | --- |
| 26 | 1.1.1.2.7 | **Finalize Deliverables** |  | 30.5d | 2007-04-02 A | 2007-05-14 A |  | 100% | 2007-04-02 | 2007-05-14 | 30.35d |  |  |  | 28h | 28h |
| 27 | 1.1.1.2.7.1 | Requirements Management Plan |  | 0.25d | 2007-04-02 A | 2007-04-09 A |  | 100% | 2007-04-02 | 2007-04-09 | 0.25d |  |  | bgendleman | 2h | 2h |
| 28 | 1.1.1.2.7.2 | Finalize Questionnaire |  | 0.25d | 2007-04-02 A | 2007-04-02 A |  | 100% | 2007-04-02 | 2007-04-02 | 0.25d |  |  | bgendleman | 2h | 2h |
| 29 | 1.1.1.2.7.3 | Draft Vision Document |  | 1d | 2007-04-30 A | 2007-05-11 A | 20, 13 | 100% | 2007-04-30 | 2007-05-11 | 1d |  |  | bgendleman | 8h | 8h |
| 30 | 1.1.1.2.7.4 | Draft Supplementary Spec |  | 1d | 2007-05-11 A | 2007-05-14 A | 29 | 100% | 2007-05-11 | 2007-05-14 | 1d |  |  | bgendleman | 8h | 8h |
| 31 | 1.1.1.2.7.5 | Draft Use Case Model |  | 1d | 2007-04-27 A | 2007-05-03 A | 21 | 100% | 2007-04-27 | 2007-05-04 | 1d |  | 2007-05-04 | bgendleman | 8h | 8h |
| 32 | 4 | **Analysis and Design** |  | 33.3d | 2007-04-02 A | 2007-05-17 A |  | 100% | 2007-04-02 | 2007-04-20 | 15d |  |  |  | 111.68h | 111.68h |
| 33 | 4.1 | Use Case Analysis (Manage Protocols) |  | 1d | 2007-04-05 A | 2007-04-05 A |  | 100% | 2007-04-05 | 2007-04-05 | 1d | start no earlier than 2007-04-05 |  | etavela | 8h | 8h |
| 34 | 1.1.1.3.2 | Use Case Design (Manage Protocols) |  | 1d | 2007-04-06 A | 2007-04-06 A | 33 | 100% | 2007-04-06 | 2007-04-06 | 1d |  |  | etavela | 8h | 8h |
| 35 | 1.1.1.3.3 | Vocabulary Management Subsystem Design |  | 4.95d | 2007-04-04 A | 2007-04-12 A |  | 100% | 2007-04-04 | 2007-04-12 | 4.95d | start no earlier than 2007-04-04 |  | etavela [10%]; jpike | 26.08h | 26.08h |
| 36 | 1.1.1.3.4 | Data Access Subsystem Design |  | 2.75d | 2007-04-09 A | 2007-04-13 A |  | 100% | 2007-04-09 | 2007-04-20 | 3d | start no earlier than 2007-04-09 | 2007-04-20 | rsrinavasa; etavela [25%] | 18h | 18h |
| 37 | 1.1.1.3.5 | MAGE-OM Façade |  | 4.5d | 2007-04-02 A | 2007-04-10 A |  | 100% | 2007-04-02 | 2007-04-10 | 4.5d |  |  | rsrinavasa; etavela [25%] | 30h | 30h |
| 38 | 1.1.1.3.6 | **Finalize Deliverables** |  | 3.3d | 2007-05-14 A | 2007-05-17 A |  | 100% | 2007-04-11 | 2007-04-19 | 6d |  |  |  | 21.6h | 21.6h |
| 39 | 1.1.1.3.6.1 | Release Candidate Software Architecture Document |  | 3d | 2007-05-14 A | 2007-05-17 A |  | 100% | 2007-04-11 | 2007-04-19 | 5d | start no earlier than 2007-05-14 |  | etavela [90%] | 21.6h | 21.6h |
| 40 | 1.1.1.4 | **Implementation** |  | 31.82d | 2007-04-02 A | 2007-05-15 A |  | 100% | 2007-04-02 | 2007-05-15 | 32d |  |  |  | 263.2h | 263.2h |
| 41 | 1.1.1.4.1 | Structure the Implementation Model |  | 1.5d | 2007-04-02 A | 2007-04-04 A |  | 100% | 2007-04-02 | 2007-04-04 | 1.5d | start no earlier than 2007-04-09 | 2007-04-06 | etavela | 12h | 12h |
| 42 | 1.1.1.4.2 | Implement Vocabulary Subsystem |  | 3w | 2007-04-13 A | 2007-05-08 A | 41, 35 | 100% | 2007-04-12 | 2007-05-08 | 3w |  |  | jpike | 120h | 120h |
| 43 | 1.1.1.4.3 | Implement Data Access |  | 3d | 2007-04-16 A | 2007-04-30 A | 41 | 100% | 2007-04-16 | 2007-04-24 | 3d | start no earlier than 2007-04-16 | 2007-04-20 | rsrinavasa | 24h | 24h |
| 44 | 1.1.1.4.4 | Implement Protocol Management |  | 2.2w | 2007-04-16 A | 2007-05-09 A | 34 | 100% | 2007-04-16 | 2007-05-09 | 2.1w | start no earlier than 2007-04-16 |  | jpike; rsrinavasa; etavela [10%] | 52h | 52h |
| 45 | 1.1.1.4.5 | Implement Protocol User Interface (minimal) |  | 3d | 2007-05-09 A | 2007-05-14 A | 44 | 100% | 2007-05-09 | 2007-05-14 | 3d |  |  | rsrinavasa; jpike | 48h | 48h |
| 46 | 1.1.1.4.6 | **Finalize Deliverables** |  | 1d | 2007-05-14 A | 2007-05-15 A |  | 100% | 2007-05-14 | 2007-05-15 | 1d |  |  |  | 7.2h | 7.2h |
| 47 | 1.1.1.4.6.1 | Release Architectural Prototype |  | 1d | 2007-05-14 A | 2007-05-15 A | 45 | 100% | 2007-05-14 | 2007-05-15 | 1d |  |  | etavela [90%] | 7.2h | 7.2h |
| 48 | 5 | **Test** |  | 31.82d | 2007-04-02 A | 2007-05-15 A |  | 100% | 2007-04-02 | 2007-05-15 | 31.07d |  |  |  | 27.8h | 27.8h |
| 49 | 1.1.1.5.1 | Meet with Indepdent QA |  | 2h | 2007-04-09 A | 2007-04-09 A |  | 100% | 2007-04-09 | 2007-04-09 | 2h | finish no later than 2007-04-27 | 2007-04-27 | bgendleman [80%] | 1.6h | 1.6h |
| 50 | 1.1.1.5.2 | Implement System Tests Against Protocol Management | milestone | 0d | 2007-05-15 A | 2007-05-15 A | 47 | 100% | 2007-05-15 | 2007-05-15 | 0d | start no earlier than 2007-05-14 |  | smatyas |  |  |
| 51 | 5.1 | Analyze and Identify Test Approach |  | 1d | 2007-04-02 A | 2007-04-27 A |  | 100% | 2007-04-02 | 2007-04-27 | 1d |  |  | smatyas; etavela; bgendleman | 8h | 8h |

| ID | WBS | Task | Type | Duration | Start | Finish | Predecessors | Complete | Remaining | Baseline start | Baseline finish | Baseline duration | Total slack | Free slack | Constraint | Deadline | Resources | Work | Actual work |
| --- | --- | --- | --- | --- | --- | --- | --- | --- | --- | --- | --- | --- | --- | --- | --- | --- | --- | --- | --- |
| 52 | 1.1.1.5.4 | **Finalize Deliverables** |  | 4.25d | 2007-04-27 A | 2007-05-03 A |  | 100% |  | 2007-04-27 | 2007-05-04 | 5d |  |  |  |  |  | 18.2h | 18.2h |
| 53 | 1.1.1.5.4.1 | Release Test Plan |  | 2.6d | 2007-04-27 A | 2007-05-03 A | 51 | 100% |  | 2007-04-27 | 2007-05-04 | 2.5d |  |  |  |  | smatyas; bgendleman [25%]; etavela [5%] | 18.2h | 18.2h |
| 54 | 6 | **Environment** |  | 30.25d | 2007-04-02 A | 2007-05-14 A |  | 100% |  | 2007-04-02 | 2007-05-14 | 30.25d |  |  |  |  |  | 136h | 136h |
| 55 | 1.1.1.6.1 | Launch Development Process |  | 6h | 2007-04-09 A | 2007-04-18 A |  | 100% |  | 2007-04-09 | 2007-04-18 | 6h |  |  | start no earlier than 2007-04-09 |  | smatyas; jpike; smiller; rsrinavasa | 12h | 12h |
| 56 | 1.1.1.6.2 | **Set Up Tools** |  | 20d | 2007-04-02 A | 2007-04-27 A |  | 100% |  | 2007-04-02 | 2007-04-27 | 20d |  |  |  |  |  | 76h | 76h |
| 57 | 1.1.1.6.2.1 | Set Up Maven |  | 4d | 2007-04-02 A | 2007-04-09 A |  | 100% |  | 2007-04-02 | 2007-04-09 | 4d |  |  | start no earlier than 2007-04-02 |  | smatyas [50%]; smiller [50%] | 16h | 16h |
| 58 | 1.1.1.6.2.2 | Set Up Continuous Integration |  | 1d | 2007-04-16 A | 2007-04-16 A |  | 100% |  | 2007-04-16 | 2007-04-16 | 1d |  |  | start no earlier than 2007-04-16 |  | smatyas | 8h | 8h |
| 59 | 1.1.1.6.2.3 | Set Up Eclipse |  | 2d | 2007-04-03 A | 2007-04-06 A |  | 100% |  | 2007-04-03 | 2007-04-06 | 2d |  |  | start no earlier than 2007-04-03 |  | jpike; smiller [50%] | 12h | 12h |
| 60 | 1.1.1.6.2.4 | Set Up Selenium |  | 2d | 2007-04-26 A | 2007-04-27 A | 58 | 100% |  | 2007-04-26 | 2007-04-27 | 2d |  |  | finish no earlier than 2007-04-27 | 2007-04-27 | smatyas | 16h | 16h |
| 61 | 1.1.1.6.2.5 | Set Up Code Quality Tools |  | 2d | 2007-04-02 A | 2007-04-09 A |  | 100% |  | 2007-04-02 | 2007-04-09 | 2d |  |  |  |  | smatyas; etavela | 24h | 24h |
| 62 | 1.1.1.6.3 | **Finalize Deliverables** |  | 19.25d | 2007-04-17 A | 2007-05-14 A |  | 100% |  | 2007-04-19 | 2007-05-14 | 17.25d |  |  |  |  |  | 48h | 48h |
| 63 | 1.1.1.6.3.1 | Release Development Case |  | 0.25d | 2007-05-14 A | 2007-05-14 A |  | 100% |  | 2007-05-14 | 2007-05-14 | 0.25d |  |  | start no earlier than 2007-05-14 |  | etavela | 2h | 2h |
| 64 | 1.1.1.6.3.2 | Release Guidelines for the Project |  | 1.25d | 2007-04-20 A | 2007-04-23 A |  | 100% |  | 2007-04-20 | 2007-04-23 | 1.25d |  |  | start no earlier than 2007-04-16 |  | etavela | 10h | 10h |
| 65 | 1.1.1.6.3.3 | Release Templates for the Project |  | 5.5d | 2007-04-17 A | 2007-04-30 A |  | 100% |  | 2007-04-19 | 2007-04-30 | 5.55d |  |  | finish no earlier than 2007-04-13 |  | smiller [50%]; etavela | 36h | 36h |
| 66 | 7 | **Configuration & Change Management** |  | 31.25d | 2007-04-02 A | 2007-05-15 A |  | 100% |  | 2007-04-02 | 2007-05-15 | 31.25d |  |  |  |  |  | 30h | 30h |
| 67 | 7.1 | Plan Project Configuration and Change Control |  | 0.5d | 2007-04-20 A | 2007-04-20 A |  | 100% |  | 2007-04-20 | 2007-04-24 | 0.55d |  |  | finish no earlier than 2007-04-20 | 2007-05-15 | etavela; bgendleman | 8h | 8h |
| 68 | 1.1.1.7.2 | **Finalize Deliverables** |  | 31.25d | 2007-04-02 A | 2007-05-15 A |  | 100% |  | 2007-04-02 | 2007-05-15 | 31.25d |  |  |  |  |  | 22h | 22h |
| 69 | 1.1.1.7.2.1 | Release Configuration Management Plan |  | 0.75d | 2007-04-02 A | 2007-05-15 A |  | 100% |  | 2007-04-02 | 2007-05-15 | 0.75d |  |  |  |  | etavela; bgendleman | 6h | 6h |
| 70 | 1.1.1.7.2.2 | G-Forge Implementation of the Change Control Process |  | 2d | 2007-04-02 A | 2007-05-14 A |  | 100% |  | 2007-04-02 | 2007-05-14 | 2d |  |  |  |  | bgendleman | 16h | 16h |
| 71 | 1.1.1.8 | Inception Complete | milestone | 0d | 2007-05-15 A | 2007-05-15 A | 4, 5, 26, 8, 52, 62, 68 | 100% |  | 2007-05-15 | 2007-05-15 | 0d |  |  | start no earlier than 2007-05-15 | 2007-05-15 |  |  |  |
| 72 | 1.2 | caArray 1.x Focus |  | 22d | 2007-05-17 A | 2007-06-18 A | 3 | 100% |  |  |  |  |  |  |  |  | etavela [90%]; bgendleman [80%]; smatyas; jpike | 651.2h | 651.2h |
| 73 | 1.3 | **Elaboration Phase** |  | 54d? | 2007-06-18 A | 2007-08-31 | 71, 72 | 30% | 37.75d? | 2007-05-15 | 2007-05-17 | 2.5d? | -24.3d | 0d |  |  |  | 2688.99h | 1272.47h |
| 74 | 1.3.1 | **Elaboration - Iteration 1** |  | 29.7d? | 2007-06-18 A | 2007-07-27 |  | 48% | 15.5d? | 2007-05-15 | 2007-05-17 | 2.5d | 0d |  |  |  |  | 2421.79h | 1272.47h |
| 75 | 1 | **Project Management** |  | 25.7d | 2007-06-18 A | 2007-07-23 | 71 | 68% | 8.19d | 2007-04-02 | 2007-05-15 | 31.25d | 0d |  |  |  |  | 212h | 179.9h |
| 76 | 1.3.1.1.1 | Inception Post Mortem |  | 4d | 2007-06-28 A | 2007-07-03 A |  | 100% |  | 2007-05-15 | 2007-05-17 | 20h |  |  | start no earlier than 2007-06-28 |  | smatyas; bgendleman [80%]; etavela [90%]; jpike; rsrinavasa | 150.4h | 150.4h |
| 77 | 1.4 | Plan Remainder of Initial Iteration |  | 1d | 2007-06-27 A | 2007-06-27 A |  | 100% |  | 2007-04-19 | 2007-04-19 | 1d |  |  | start no earlier than 2007-06-27 |  | etavela [90%]; bgendleman [80%] | 13.6h | 13.6h |
| 78 | 1.3.1.1.3 | Weekly Status Meetings |  | 1.5d | 2007-06-18 A | 2007-06-19 |  | 50% | 0.75d |  |  |  | -56.8d | 0d | start no earlier than 2007-05-23 |  | bgendleman [80%] | 9.6h | 4.8h |
| 79 | 1.8 | Plan for Next Iteration |  | 1d | 2007-07-23 A | 2007-07-23 | 83FF | 25% | 0.75d | 2007-05-07 | 2007-05-11 | 5d | -81d | 0d | start no earlier than 2007-07-23 |  | bgendleman [80%]; etavela [90%] | 13.6h | 3.4h |

Notes:
- 57: Instructions documented on Wiki
- 59: Instructions documented on Wiki
- 61: Cobertura, PMD, CheckStyle, Simian, JUnit
- 64: UML, Java, JSP/HTML
- 65: Java, JSP/HTML / Use Case Summary / Use Case Specification / Vision / Traceability Matrix - will attempt to do in EA

| ID | WBS | Task | Duration | Start | Finish | Predecessors | Complete | Remaining | Baseline start | Baseline finish | Baseline duration | Total slack | Free slack | Constraint | Deadline | Resources | Work | Actual work |
| --- | --- | --- | --- | --- | --- | --- | --- | --- | --- | --- | --- | --- | --- | --- | --- | --- | --- | --- |
| 80 | 1.3.1.1.5 | **Finalize Deliverables** | 5.7d | 2007-06-18 A | 2007-06-25 |  | 33% | 3.85d | 2007-04-02 | 2007-05-15 | 31.25d | 0d |  |  |  |  | 24.8h | 7.7h |
| 81 | 1.3.1.1.5.1 | May Status Report | 2h | 2007-06-18 A | 2007-06-18 A |  | 100% |  | 2007-04-16 | 2007-04-16 | 2h |  |  | start no earlier than 2007-06-08 | 2007-04-18 | bgendleman | 2h | 2h |
| 82 | 1.3.1.1.5.2 | Update Risk List | 2h | 2007-06-18 A | 2007-06-18 |  | 25% | 1.5h | 2007-04-02 | 2007-04-02 | 2h | -23.55d | 0d | start no earlier than 2007-05-24 | 2007-05-15 | bgendleman | 2h | 0.5h |
| 83 | 1.9 | Finalize Iteration Plans | 2d | 2007-06-22 A | 2007-06-25 |  | 25% | 1.5d | 2007-05-11 | 2007-05-11 | 1d | -61d | 0d | start no earlier than 2007-06-22 |  | bgendleman [80%]; etavela [50%] | 20.8h | 5.2h |
| 84 | 1.3.1.2 | **Requirements** | 27.7d | 2007-06-18 A | 2007-07-25 |  | 57% | 11.91d |  |  |  | -3d | 0d |  |  |  | 298.4h | 178h |
| 85 | 1.3.1.2.1 | Update Draft Documents | 3d | 2007-06-18 A | 2007-06-21 |  | 75% | 0.75d |  |  |  | -58.3d | 0d | start no earlier than 2007-05-22 |  | bgendleman | 24h | 18h |
| 86 | 1.3.1.2.2 | Write Prioritized Use Cases | 10d | 2007-06-18 A | 2007-07-02 |  | 50% | 5d |  |  |  | -68.3d | 0d | start no earlier than 2007-05-25 |  | bgendleman | 80h | 40h |
| 87 | 1.3.1.2.3 | Create Wireframes for targeted Ucs | 3d | 2007-07-23 | 2007-07-25 | 86, 102 |  |  |  |  |  | -83d | 0d |  |  | bgendleman | 24h |  |
| 88 | 1.3.1.2.4 | Consolidate Models | 1d | 2007-06-18 A | 2007-06-19 A |  | 100% |  |  |  |  |  |  | start no earlier than 2007-05-24 |  | bgendleman [80%]; etavela [90%] | 13.6h | 13.6h |
| 89 | 1.3.1.2.5 | **Finalize Deliverables** | 26.7d | 2007-06-18 A | 2007-07-24 |  | 65% | 9.35d |  |  |  | -2d | 0d |  |  |  | 156.8h | 106.4h |
| 90 | 1.3.1.2.5.1 | Update Vision | 1d | 2007-06-21 A | 2007-06-22 | 85 | 75% | 0.25d |  |  |  | -59.3d | 0d |  |  | bgendleman | 8h | 6h |
| 91 | 1.3.1.2.5.2 | Update Supplemental Specification | 1d | 2007-06-21 A | 2007-06-22 | 85 | 25% | 0.75d |  |  |  | -59.3d | 0d |  |  | bgendleman | 8h | 2h |
| 92 | 1.3.1.2.5.3 | UC Login | 1d | 2007-06-18 A | 2007-06-19 A |  | 100% |  |  |  |  |  |  |  |  | bgendleman | 8h | 8h |
| 93 | 1.3.1.2.5.4 | UC Acquire Project Data via API | 2d | 2007-06-18 A | 2007-06-20 |  | 50% | 1d |  |  |  | -57.3d | 0d |  |  | rsrinavasa | 16h | 8h |
| 94 | 1.3.1.2.5.5 | UC Manage Data Files | 2d | 2007-06-22 A | 2007-06-25 A |  | 100% |  |  |  |  |  |  |  |  | rsrinavasa; bgendleman [80%] | 28.8h | 28.8h |
| 95 | 1.3.1.2.5.6 | UC Import Project Data | 1d | 2007-07-02 A | 2007-07-03 A | 86 | 100% |  |  |  |  |  |  |  |  | bgendleman | 8h | 8h |
| 96 | 1.3.1.2.5.7 | UC Submit Project Proposal | 1d | 2007-07-03 A | 2007-07-04 A | 95 | 100% |  |  |  |  |  |  |  |  | bgendleman | 8h | 8h |
| 97 | 1.3.1.2.5.8 | UC Report on Work Accomplished | 1d | 2007-07-04 A | 2007-07-05 A | 96 | 100% |  |  |  |  |  |  |  |  | bgendleman | 8h | 8h |
| 98 | 1.3.1.2.5.9 | UC Validate File for Submission | 1d | 2007-07-05 A | 2007-07-06 A | 97 | 100% |  |  |  |  |  |  |  |  | bgendleman | 8h | 8h |
| 99 | 1.3.1.2.5.10 | UC Download Project Data | 1d | 2007-07-06 A | 2007-07-09 | 98 | 50% | 0.5d |  |  |  | -70.3d | 0d |  |  | bgendleman | 8h | 4h |
| 100 | 1.3.1.2.5.11 | UC Manage Users | 1d | 2007-07-09 A | 2007-07-10 A | 99 | 100% |  |  |  |  |  |  |  |  | bgendleman | 8h | 8h |
| 101 | 1.3.1.2.5.12 | UC Manage Institutional Groups | 1d | 2007-07-10 A | 2007-07-11 A | 100 | 100% |  |  |  |  |  |  |  |  | bgendleman | 8h | 8h |
| 102 | 1.3.1.2.5.13 | UX Modeling/Wireframes | 2d | 2007-07-19 A | 2007-07-20 | 101 | 10% | 1.8d |  |  |  | -83d | 0d |  |  | bgendleman | 16h | 1.6h |
| 103 | 1.3.1.2.5.14 | Stylesheet Framework | 2d | 2007-07-23 | 2007-07-24 | 102 |  |  |  |  |  | -82d | 0d |  |  | bgendleman | 16h |  |

| ID | WBS | Task | Duration | Start | Finish | Predecessors | Complete | Remaining | Total slack | Free slack | Constraint | Resources | Work | Actual work |
| --- | --- | --- | --- | --- | --- | --- | --- | --- | --- | --- | --- | --- | --- | --- |
| 104 | 1.3.1.3 | **Analysis and Design** | 29.7d | 2007-06-18 A | 2007-07-27 |  | 43% | 16.8d | 0d |  |  |  | 536.59h | 320.77h |
| 105 | 1.3.1.3.1 | Targeted Use Case Analysis and Design | 10d | 2007-07-02 A | 2007-07-16 | 76, 86 | 90% | 1d | -75.3d | 0d | start no earlier than 2007-05-23 | etavela [90%]; jpike; rsrinavasa | 232h | 208.8h |
| 106 | 1.3.1.3.2 | MIAME and MAGE-TAB Comparison | 2d | 2007-07-05 A | 2007-07-06 A |  | 100% |  |  |  | start no earlier than 2007-07-05 | etavela [10%]; jpike; rsrinavasa | 33.6h | 33.6h |
| 107 | 1.3.1.3.3 | Grid Strategy | 8.53d | 2007-06-18 A | 2007-06-28 |  | 25% | 6.39d | -63.83d | 0d |  | etavela [25%]; rsrinavasa | 36h | 21.32h |
| 108 | 1.3.1.3.4 | Parsing Strategy | 3d | 2007-07-16 A | 2007-07-19 | 105 | 90% | 0.3d | -78.3d | 0d |  | etavela [90%] | 21.6h | 19.44h |
| 109 | 1.3.1.3.5 | Binary Storage | 3d | 2007-07-16 A | 2007-07-19 | 105 | 75% | 0.75d | -78.3d | 0d |  | etavela [90%] | 21.6h | 16.2h |
| 110 | 1.3.1.3.6 | Represent SNP Data - Deferred | 3d | 2007-06-18 A | 2007-06-21 A |  | 100% |  |  |  | start no earlier than 2007-05-24 |  |  |  |
| 111 | 1.3.1.3.7 | Security | 3d | 2007-07-16 A | 2007-07-19 | 105 | 20% | 2.4d | -78.3d | 0d | start no earlier than 2007-05-29 |  |  |  |
| 112 | 1.3.1.3.8 | 1.6 Data Migration Strategy | 2d | 2007-07-16 A | 2007-07-18 | 105 | 20% | 1.6d | -77.3d | 0d |  | etavela [90%]; smatyas [50%] | 22.4h | 4.48h |
| 113 | 1.3.1.3.9 | **Finalize Deliverables** | 21.17d | 2007-06-28 A | 2007-07-27 |  | 10% | 19.06d | 0d |  |  |  | 169.39h | 16.94h |
| 114 | 1.3.1.3.9.1 | Update Software Architecture Document | 21.17d | 2007-06-28 A | 2007-07-27 | 107 | 10% | 19.06d | 0d |  | finish no earlier than 2007-07-27 | etavela | 169.39h | 16.94h |
| 115 | 1.3.1.4 | **Implementation** | 19.34d | 2007-07-02 A | 2007-07-27 |  | 57% | 8.31d | -1.34d | 0d |  |  | 356h | 168h |
| 116 | 1.3.1.4.1 | Implement UC Import Project Data | 5d | 2007-07-19 A | 2007-07-26 | 108 | 60% | 2d | -83.3d | 0d |  | bmason; rsrinavasa; jpike; etavela [90%] | 110.4h | 48h |
| 117 | 1.3.1.4.2 | Implement UC Submit Project Proposal | 2d | 2007-07-23 | 2007-07-24 |  |  |  | -82d | 0d | start no earlier than 2007-07-23 | etavela [90%]; tparnell | 30.4h |  |
| 118 | 1.3.1.4.3 | Implement UC Login (incomplete) | 5d | 2007-07-02 A | 2007-07-09 A | 86 | 100% |  |  |  | start no earlier than 2007-06-01 | jpike | 40h | 40h |
| 119 | 1.3.1.4.4 | Implement UC Acquire Project Data via API | 10d | 2007-07-09 A | 2007-07-23 | 118 | 50% | 5d | -80.3d | 0d |  | etavela [90%]; rsrinavasa | 152h | 76h |
| 120 | 1.3.1.4.5 | Implement UC Manage Project Data Files (to support import) | 1.02d | 2007-07-23 A | 2007-07-24 | 119 | 49% | 0.52d | -81.32d | 0d |  | rsrinavasa; etavela [90%]; tparnell | 16h | 4h |
| 121 | 1.3.1.4.6 | **Finalize Deliverables** | 0.64d | 2007-07-27 | 2007-07-27 |  |  |  | -84.64d | 0d |  |  | 7.2h |  |
| 122 | 1.3.1.4.6.1 | Release Final E1 Development Build | 0.64d | 2007-07-27 | 2007-07-27 |  |  |  | -84.64d | 0d | start no earlier than 2007-07-27 | etavela [90%]; smatyas [50%] | 7.2h |  |
| 123 | 1.3.1.5 | **Test** | 9d | 2007-07-16 A | 2007-07-27 |  | 13% | 7.88d | -4d | 0d |  |  | 175.2h | 29h |
| 124 | 1.3.1.5.1 | Create Functional Test for targeted UC's | 5d | 2007-07-16 A | 2007-07-23 | 105 | 25% | 3.75d | -109.3d | 0d |  | jpike; rsrinavasa; etavela [90%] | 116h | 29h |
| 125 | 1.3.1.5.2 | Incorporate Test Cases into Gforge | 1d | 2007-07-25 | 2007-07-25 |  |  |  | -83d | 0d | start no earlier than 2007-07-25 | bgendleman | 8h |  |
| 126 | 1.3.1.5.3 | Manage Test Assets | 2d | 2007-07-23 | 2007-07-25 | 124 |  |  | -109.3d | 0d |  | smatyas [50%]; etavela [90%]; bgendleman [80%] | 35.2h |  |
| 127 | 1.3.1.5.4 | **Finalize Deliverables** | 2d | 2007-07-25 | 2007-07-27 |  |  |  | -109.3d | 0d |  |  | 16h |  |
| 128 | 1.3.1.5.4.1 | Release Test Plan | 2d | 2007-07-25 | 2007-07-27 | 126 |  |  | -109.3d | 0d |  | bgendleman | 16h |  |

Notes:
- 124: Selenium for Browser, Junit for API

| ID | WBS | Task | Type | Duration | Start | Finish | Predecessors | Complete | Remaining | Baseline start | Baseline finish | Baseline duration | Total slack | Free slack | Constraint | Resources | Work | Actual work |
| --- | --- | --- | --- | --- | --- | --- | --- | --- | --- | --- | --- | --- | --- | --- | --- | --- | --- | --- |
| 129 | 1.3.1.6 | **Environment** |  | 29.7d? | 2007-06-18 A | 2007-07-27 |  | 41% | 17.47d? |  |  |  | 0d |  |  |  | 503.6h | 226.8h |
| 130 | 1.3.1.6.1 | Create and Revise ARC Document |  | 1d? | 2007-07-10 A | 2007-07-10 |  | 50% | 0.5d? |  |  |  | -72d | 0d | start no earlier than 2007-07-10 |  |  |  |
| 131 | 1.3.1.6.2 | Work with Systems to Establish Dev and QA Boxes |  | 1d? | 2007-06-18 A | 2007-06-19 |  | 10% | 0.9d? |  |  |  | -56.3d | 0d |  |  |  |  |
| 132 | 1.3.1.6.3 | Craft Draft Build and Deploy Plan |  | 4.2w | 2007-06-29 A | 2007-07-27 |  | 50% | 2.1w |  |  |  | 0d |  | finish no earlier than 2007-07-27 | pduvall; aglover; smatyas [25%]; bgendleman [10%]; etavela [10%] | 411.6h | 205.8h |
| 133 | 1.3.1.6.4 | Integrate Automation Scripts to Support Dev to QA Builds |  | 1w | 2007-06-18 A | 2007-06-25 |  | 25% | 0.75w |  |  |  | -60.3d | 0d |  | pduvall; aglover; etavela [10%] | 84h | 21h |
| 134 | 1.3.1.6.5 | Integrate Test Suite into Gforge |  | 2d | 2007-07-25 | 2007-07-27 | 126 |  |  |  |  |  | -84.3d | 0d |  | smatyas [50%] | 8h |  |
| 135 | 1.3.1.7 | **Configuration and Change Management** |  | 25d | 2007-06-18 A | 2007-07-23 |  | 50% | 12.5d |  |  |  | 0d |  |  |  | 340h | 170h |
| 136 | 1.3.1.7.1 | Manage Gforge Content |  | 25d | 2007-06-18 A | 2007-07-23 |  | 50% | 12.5d |  |  |  | -80.3d | 0d | start no earlier than 2007-05-22 | bgendleman [80%]; etavela [90%] | 340h | 170h |
| 137 | 1.3.1.8 | Elaboration 1 Complete | milestone | 0d | 2007-07-27 | 2007-07-27 | 128 |  |  |  |  |  | 0d |  | start no earlier than 2007-06-27 |  |  |  |
| 138 | 1.3.2 | **Elaboration - Iteration 2** |  | 25d | 2007-07-27 | 2007-08-31 | 137 |  |  | 2007-05-15 | 2007-05-16 | 1d? | -109.3d | 0d |  |  | 267.2h |  |
| 139 | 1.3.2.1 | **Project Management** |  | 1.5d | 2007-07-27 | 2007-07-30 |  |  |  |  |  |  | -85.8d | 0d |  | bgendleman | 80h |  |
| 140 | 1.3.2.1.1 | E1 Post Mortem |  | 1d | 2007-07-27 | 2007-07-30 |  |  |  |  |  |  | -85.3d | 0d |  | bgendleman | 8h |  |
| 141 | 1.3.2.1.2 | E2 Review |  | 0.5d | 2007-07-27 | 2007-07-27 | 137 |  |  |  |  |  | -84.8d | 0d |  | bgendleman | 4h |  |
| 142 | 1.3.2.1.3 | Plan Remainder of Initial Iteration |  | 1d | 2007-07-27 | 2007-07-30 |  |  |  |  |  |  | -85.3d | 0d |  | bgendleman | 8h |  |
| 143 | 1.3.2.1.4 | Weekly Status Meetings |  | 1.5d | 2007-07-27 | 2007-07-30 |  |  |  |  |  |  | -85.8d | 0d |  | bgendleman | 12h |  |
| 144 | 1.3.2.1.5 | Plan for Next Iteration |  | 1d | 2007-07-27 | 2007-07-30 |  |  |  |  |  |  | -85.3d | 0d |  | bgendleman | 8h |  |
| 145 | 1.3.2.1.6 | **Finalize Deliverables** |  | 1d | 2007-07-27 | 2007-07-30 |  |  |  |  |  |  | -85.3d | 0d |  | bgendleman | 28h |  |
| 146 | 1.3.2.1.6.1 | July Status Report |  | 0.5d | 2007-07-27 | 2007-07-27 |  |  |  |  |  |  | -84.8d | 0d |  | bgendleman | 4h |  |
| 147 | 1.3.2.1.6.2 | Update Risk List |  | 1d | 2007-07-27 | 2007-07-30 |  |  |  |  |  |  | -85.3d | 0d |  | bgendleman | 8h |  |
| 148 | 1.3.2.1.6.3 | Finalize C1 Iteration Plans |  | 1d | 2007-07-27 | 2007-07-30 |  |  |  |  |  |  | -85.3d | 0d |  | bgendleman | 8h |  |
| 149 | 1.3.2.2 | **Requirements** |  | 10d | 2007-07-27 | 2007-08-10 |  |  |  |  |  |  | -94.3d | 0d |  |  | 139.2h |  |
| 150 | 1.3.2.2.1 | Incorporate Stakeholder Feedback on Vision and Supp Spec |  | 2d | 2007-07-27 | 2007-07-31 |  |  |  |  |  |  | -89.3d | 0d |  | bgendleman | 16h |  |
| 151 | 1.3.2.2.2 | Incorporate Stakeholder Feedback on E1 Use Cases |  | 3d | 2007-07-31 | 2007-08-03 | 150 |  |  |  |  |  | -89.3d | 0d |  | bgendleman | 24h |  |
| 152 | 1.3.2.2.3 | Update Wireframes |  | 3d | 2007-07-27 | 2007-08-01 |  |  |  |  |  |  | -87.3d | 0d |  |  |  |  |
| 153 | 1.3.2.2.4 | User Interface Design |  | 3d | 2007-07-27 | 2007-08-01 |  |  |  |  |  |  | -87.3d | 0d |  | bgendleman [80%] | 19.2h |  |
| 154 | 1.3.2.2.5 | Detail E2 Use Cases |  | 10d | 2007-07-27 | 2007-08-10 |  |  |  |  |  |  | -94.3d | 0d |  | bgendleman | 80h |  |
| 155 | 1.3.2.3 | Analysis and Design |  | 25d | 2007-07-27 | 2007-08-31 |  |  |  |  |  |  | 0d |  |  |  |  |  |

| ID | WBS | Task | Type | Duration | Start | Finish | Predecessors | Baseline start | Baseline finish | Baseline duration | Total slack | Free slack | Resources | Work |
| --- | --- | --- | --- | --- | --- | --- | --- | --- | --- | --- | --- | --- | --- | --- |
| 156 | 1.3.2.4 | **Implementation** |  | 5d | 2007-07-27 | 2007-08-03 |  |  |  |  | -89.3d | 0d |  |  |
| 157 | 1.3.2.4.1 | Implement UC Report on Work Accomplished |  | 5d | 2007-07-27 | 2007-08-03 |  |  |  |  | -89.3d | 0d |  |  |
| 158 | 1.3.2.5 | Test |  | 25d | 2007-07-27 | 2007-08-31 |  |  |  |  | 0d |  |  |  |
| 159 | 1.3.2.6 | **Environment** |  | 3d | 2007-07-27 | 2007-08-01 |  |  |  |  | -87.3d | 0d |  | 48h |
| 160 | 1.3.2.6.1 | Complete DEV to QA Integration |  | 3d | 2007-07-27 | 2007-08-01 |  |  |  |  | -87.3d | 0d | aglover; pduvall | 48h |
| 161 | 1.3.2.7 | Configuration and Change Management |  | 25d | 2007-07-27 | 2007-08-31 |  |  |  |  | 0d |  |  |  |
| 162 | 1.3.2.8 | Elaboration 2 Complete | milestone | 0d | 2007-08-31 | 2007-08-31 | 161 |  |  |  | 0d |  |  |  |
| 163 | 1.4 | **Construction Phase** |  | 60d | 2007-08-31 | 2007-11-23 | 73 | 2007-05-17 | 2007-05-18 | 1d? | -109.3d | 0d |  |  |
| 164 | 1.4.1 | **Construction - Iteration 1** |  | 20d | 2007-08-31 | 2007-09-28 |  | 2007-05-17 | 2007-05-18 | 1d? | -109.3d | 0d |  |  |
| 165 | 1.4.1.1 | Project Management |  | 20d | 2007-08-31 | 2007-09-28 |  |  |  |  | -69.3d | 0d |  |  |
| 166 | 1.4.1.2 | Requirements |  | 20d | 2007-08-31 | 2007-09-28 |  |  |  |  | -69.3d | 0d |  |  |
| 167 | 1.4.1.3 | Analysis and Design |  | 20d | 2007-08-31 | 2007-09-28 |  |  |  |  | -69.3d | 0d |  |  |
| 168 | 1.4.1.4 | Implementation |  | 20d | 2007-08-31 | 2007-09-28 |  |  |  |  | -69.3d | 0d |  |  |
| 169 | 1.4.1.5 | Test |  | 20d | 2007-08-31 | 2007-09-28 |  |  |  |  | -69.3d | 0d |  |  |
| 170 | 1.4.1.6 | Environment |  | 20d | 2007-08-31 | 2007-09-28 |  |  |  |  | -69.3d | 0d |  |  |
| 171 | 1.4.1.7 | Configuration and Change Management |  | 20d | 2007-08-31 | 2007-09-28 |  |  |  |  | 0d |  |  |  |
| 172 | 1.4.1.8 | Construction 1 Complete | milestone | 0d | 2007-09-28 | 2007-09-28 | 171 |  |  |  | 0d |  |  |  |
| 173 | 1.4.2 | **Construction - Iteration 2** |  | 20d | 2007-09-28 | 2007-10-26 | 172 | 2007-05-17 | 2007-05-18 | 1d? | -109.3d | 0d |  |  |
| 174 | 1.4.2.1 | Project Management |  | 20d | 2007-09-28 | 2007-10-26 |  |  |  |  | 0d |  |  |  |
| 175 | 1.4.2.2 | Requirements |  | 20d | 2007-09-28 | 2007-10-26 |  |  |  |  | 0d |  |  |  |
| 176 | 1.4.2.3 | Analysis and Design |  | 20d | 2007-09-28 | 2007-10-26 |  |  |  |  | 0d |  |  |  |
| 177 | 1.4.2.4 | Implementation |  | 20d | 2007-09-28 | 2007-10-26 |  |  |  |  | 0d |  |  |  |
| 178 | 1.4.2.5 | Test |  | 20d | 2007-09-28 | 2007-10-26 |  |  |  |  | 0d |  |  |  |
| 179 | 1.4.2.6 | Environment |  | 20d | 2007-09-28 | 2007-10-26 |  |  |  |  | 0d |  |  |  |
| 180 | 1.4.2.7 | Configuration and Change Management |  | 20d | 2007-09-28 | 2007-10-26 |  |  |  |  | 0d |  |  |  |
| 181 | 1.4.2.8 | Construction 2 Complete | milestone | 0d | 2007-09-28 | 2007-09-28 |  |  |  |  | -89.3d | 0d |  |  |

| ID | WBS | Task | Type | Duration | Start | Finish | Predecessors | Baseline start | Baseline finish | Baseline duration | Total slack | Free slack |
| --- | --- | --- | --- | --- | --- | --- | --- | --- | --- | --- | --- | --- |
| 182 | 1.4.3 | **Construction - Iteration 3** |  | 20d | 2007-10-26 | 2007-11-23 | 181, 173 |  |  |  | -109.3d | 0d |
| 183 | 1.4.3.1 | Project Management |  | 20d | 2007-10-26 | 2007-11-23 |  |  |  |  | 0d |  |
| 184 | 1.4.3.2 | Requirements |  | 20d | 2007-10-26 | 2007-11-23 |  |  |  |  | 0d |  |
| 185 | 1.4.3.3 | Analysis and Design |  | 20d | 2007-10-26 | 2007-11-23 |  |  |  |  | 0d |  |
| 186 | 1.4.3.4 | Implementation |  | 20d | 2007-10-26 | 2007-11-23 |  |  |  |  | 0d |  |
| 187 | 1.4.3.5 | Test |  | 20d | 2007-10-26 | 2007-11-23 |  |  |  |  | 0d |  |
| 188 | 1.4.3.6 | Environment |  | 20d | 2007-10-26 | 2007-11-23 |  |  |  |  | 0d |  |
| 189 | 1.4.3.7 | Configuration and Change Management |  | 20d | 2007-10-26 | 2007-11-23 |  |  |  |  | 0d |  |
| 190 | 1.4.3.8 | Construction Iteration 3 Complete | milestone | 0d | 2007-11-23 | 2007-11-23 | 189 | 2007-05-17 | 2007-05-18 | 1d? | 0d |  |
| 191 | 1.5 | **Transition Phase** |  | 25d | 2007-11-23 | 2007-12-28 | 163 | 2007-05-18 | 2007-05-21 | 1d? | -109.3d | 0d |
| 192 | 1.5.1 | **Transition - Iteration 1** |  | 25d | 2007-11-23 | 2007-12-28 |  | 2007-05-18 | 2007-05-21 | 1d? | -109.3d | 0d |
| 193 | 1.5.1.1 | Task |  | 25d | 2007-11-23 | 2007-12-28 |  |  |  |  | 0d |  |
